# Nhóm6_ASAP

Schedule from MS Project, 2023-08-30 to 2023-12-06, costs in ₫, A marks actual dates.

## Calendars

- Standard: Mon-Fri 08:00-12:00, 13:00-17:00; Sat-Sun off.

## Resources

| Resource | Rate |
| --- | --- |
| Huỳnh Anh Vũ | 100000 |
| Trần Quang Huy | 100000 |
| Lương Quý Tuấn | 100000 |
| Trần Thanh Hoài | 100000 |
| Võ Thanh Minh | 100000 |
| Trần Gia Huy | 100000 |
| Trần Nguyễn Tường Vy | 100000 |
| Bồ Nguyên Huy | 100000 |

## Schedule

| ID | WBS | Task | Type | Duration | Start | Finish | Predecessors | Complete | Remaining | Total slack | Resources | Work | Actual work | Cost | Actual cost |
| --- | --- | --- | --- | --- | --- | --- | --- | --- | --- | --- | --- | --- | --- | --- | --- |
| 1 | 1 | **Quản lý website bán quần áo thời trang** |  | 71d | 2023-08-30 08:00 A | 2023-12-06 17:00 |  | 79% | 14.85d |  |  | 568h | 429.2h | 56,800,000 | 42,920,000 |
| 2 | 1.1 | **Bắt đầu dự án** |  | 7.5d | 2023-08-30 08:00 A | 2023-09-08 12:00 A |  | 100% |  |  |  | 60h | 60h | 6,000,000 | 6,000,000 |
| 3 | 1.1.1 | **A.Khảo sát hiện trạng và thu thập yêu cầu** |  | 7.5d | 2023-08-30 08:00 A | 2023-09-08 12:00 A |  | 100% |  |  |  | 60h | 60h | 6,000,000 | 6,000,000 |
| 4 | 1.1.1.1 | **Khảo sát quy trình hoạt động** |  | 3.5d | 2023-08-30 08:00 A | 2023-09-04 12:00 A |  | 100% |  |  |  | 28h | 28h | 2,800,000 | 2,800,000 |
| 5 | 1.1.1.1.1 | Tìm hiểu hiểu quy trình đặt hàng |  | 0.5d | 2023-08-30 08:00 A | 2023-08-30 12:00 A |  | 100% |  |  | Huỳnh Anh Vũ | 4h | 4h | 400,000 | 400,000 |
| 6 | 1.1.1.1.2 | Khảo sát các mặt hàng sản phẩm |  | 1d | 2023-08-30 13:00 A | 2023-08-31 12:00 A | 5 | 100% |  |  | Huỳnh Anh Vũ | 8h | 8h | 800,000 | 800,000 |
| 7 | 1.1.1.1.3 | Khảo sát quy trình đăng nhập / đăng ký |  | 1d | 2023-08-31 13:00 A | 2023-09-01 12:00 A | 6 | 100% |  |  | Huỳnh Anh Vũ | 8h | 8h | 800,000 | 800,000 |
| 8 | 1.1.1.1.4 | Khảo sát quy trình thanh toán điện tử |  | 1d | 2023-09-01 13:00 A | 2023-09-04 12:00 A | 7 | 100% |  |  | Huỳnh Anh Vũ | 8h | 8h | 800,000 | 800,000 |
| 9 | 1.1.1.2 | **Trao đổi với khách hàng** |  | 3d | 2023-09-04 13:00 A | 2023-09-07 12:00 A | 4 | 100% |  |  |  | 24h | 24h | 2,400,000 | 2,400,000 |
| 10 | 1.1.1.2.1 | Khảo sát quy trình hỗ trợ khách hàng |  | 1d | 2023-09-04 13:00 A | 2023-09-05 12:00 A |  | 100% |  |  | Võ Thanh Minh | 8h | 8h | 800,000 | 800,000 |
| 11 | 1.1.1.2.2 | Khảo sát thông tin khách hàng |  | 1d | 2023-09-05 13:00 A | 2023-09-06 12:00 A | 10 | 100% |  |  | Võ Thanh Minh | 8h | 8h | 800,000 | 800,000 |
| 12 | 1.1.1.2.3 | Lấy yêu cầu từ khách hàng về dự án |  | 1d | 2023-09-06 13:00 A | 2023-09-07 12:00 A | 11 | 100% |  |  | Võ Thanh Minh | 8h | 8h | 800,000 | 800,000 |
| 13 | 1.1.1.3 | **Thực hiện báo cáo** |  | 1d | 2023-09-07 13:00 A | 2023-09-08 12:00 A | 9 | 100% |  |  |  | 8h | 8h | 800,000 | 800,000 |
| 14 | 1.1.1.3.1 | Xây dựng báo cáo chi tiết những thông tin đã thu thập được |  | 1d | 2023-09-07 13:00 A | 2023-09-08 12:00 A |  | 100% |  |  | Huỳnh Anh Vũ | 8h | 8h | 800,000 | 800,000 |
| 15 | 1.2 | Hoàn thành giai đoạn khởi đầu dự án | milestone | 0d | 2023-09-08 12:00 A | 2023-09-08 12:00 A | 2 | 100% |  |  |  |  |  |  |  |
| 16 | 1.3 | **Phân tích** |  | 8.75d | 2023-09-08 13:00 A | 2023-09-21 10:00 | 15 | 99% | 0d | 0d |  | 62h | 42h | 6,200,000 | 4,200,000 |
| 17 | 1.3.1 | **B.Phân Tích yêu cầu** |  | 8.75d | 2023-09-08 13:00 A | 2023-09-21 10:00 |  | 99% | 0d | 0d |  | 62h | 42h | 6,200,000 | 4,200,000 |
| 18 | 1.3.1.1 | **Xác định yêu cầu** |  | 3d | 2023-09-08 13:00 A | 2023-09-13 12:00 A |  | 100% |  |  |  | 24h | 24h | 2,400,000 | 2,400,000 |
| 19 | 1.3.1.1.1 | **Xác định yêu cầu nghiệp vụ** |  | 2d | 2023-09-08 13:00 A | 2023-09-12 12:00 A |  | 100% |  |  |  | 16h | 16h | 1,600,000 | 1,600,000 |
| 20 | 1.3.1.1.1.1 | Yêu cầu chung cho hệ thống |  | 1d | 2023-09-08 13:00 A | 2023-09-11 12:00 A |  | 100% |  |  | Trần Gia Huy | 8h | 8h | 800,000 | 800,000 |
| 21 | 1.3.1.1.1.2 | Yêu cầu cho mỗi chức năng của hệ thống |  | 1d | 2023-09-11 13:00 A | 2023-09-12 12:00 A | 20 | 100% |  |  | Trần Gia Huy | 8h | 8h | 800,000 | 800,000 |
| 22 | 1.3.1.1.2 | **Xác định yêu cầu hệ thống** |  | 1d | 2023-09-12 13:00 A | 2023-09-13 12:00 A | 19 | 100% |  |  |  | 8h | 8h | 800,000 | 800,000 |
| 23 | 1.3.1.1.2.1 | Mô tả giao diện hệ thống |  | 1d | 2023-09-12 13:00 A | 2023-09-13 12:00 A |  | 100% |  |  | Trần Gia Huy | 8h | 8h | 800,000 | 800,000 |
| 24 | 1.3.1.2 | **Đặc tả** |  | 5.75d | 2023-09-13 13:00 A | 2023-09-21 10:00 | 18 | 99% | 0d | 0d |  | 38h | 18h | 3,800,000 | 1,800,000 |
| 25 | 1.3.1.2.1 | **Phân tích yêu cầu** |  | 2.75d | 2023-09-13 13:00 A | 2023-09-18 10:00 |  | 99% | 0d | 0d | Trần Gia Huy | 22h | 2h | 2,200,000 | 200,000 |
| 26 | 1.3.1.2.1.1 | Phân tích quy trình đăng nhập / đăng ký |  | 0.25d | 2023-09-13 13:00 A | 2023-09-13 15:00 A |  | 100% |  |  |  |  |  |  |  |
| 27 | 1.3.1.2.1.2 | Phân tích các mặt hàng sản phẩm |  | 0.5d | 2023-09-13 15:00 A | 2023-09-14 10:00 A | 26 | 100% |  |  |  |  |  |  |  |
| 28 | 1.3.1.2.1.3 | Phân tích quy trình mua hàng |  | 0.5d | 2023-09-14 10:00 A | 2023-09-14 15:00 A | 27 | 100% |  |  |  |  |  |  |  |
| 29 | 1.3.1.2.1.4 | Phân tích quy trình thanh toán điện tử |  | 0.5d | 2023-09-14 15:00 A | 2023-09-15 10:00 A | 28 | 100% |  |  |  |  |  |  |  |
| 30 | 1.3.1.2.1.5 | Phân tích thông tin khách hàng |  | 0.5d | 2023-09-15 10:00 A | 2023-09-15 15:00 A | 29 | 100% |  |  |  |  |  |  |  |
| 31 | 1.3.1.2.1.6 | Phân tích quy trình hỗ trợ khách hàng |  | 0.5d | 2023-09-15 15:00 A | 2023-09-18 10:00 A | 30 | 100% |  |  |  |  |  |  |  |
| 32 | 1.3.1.2.2 | Xây dựng ý tưởng |  | 1d | 2023-09-18 10:00 A | 2023-09-19 10:00 A | 25 | 100% |  |  | Trần Thanh Hoài | 8h | 8h | 800,000 | 800,000 |
| 33 | 1.3.1.2.3 | Lập kế hoạch tổng quan |  | 1d | 2023-09-19 10:00 A | 2023-09-20 10:00 A | 32 | 100% |  |  | Trần Thanh Hoài | 8h | 8h | 800,000 | 800,000 |
| 34 | 1.3.1.2.4 | Lập bảng chi tiết công việc | milestone | 0d | 2023-09-20 10:00 A | 2023-09-21 10:00 A | 33 | 100% |  |  | Trần Thanh Hoài |  |  |  |  |
| 35 | 1.4 | Hoàn thành phân tích | milestone | 0d | 2023-09-21 10:00 A | 2023-09-21 10:00 A | 16 | 100% |  |  |  |  |  |  |  |

| ID | WBS | Task | Type | Duration | Start | Finish | Predecessors | Complete | Constraint | Resources | Work | Actual work | Cost | Actual cost |
| --- | --- | --- | --- | --- | --- | --- | --- | --- | --- | --- | --- | --- | --- | --- |
| 36 | 1.5 | **Thiết kế** |  | 5d | 2023-09-21 10:00 A | 2023-09-28 10:00 A | 35 | 100% |  |  | 40h | 40h | 4,000,000 | 4,000,000 |
| 37 | 1.5.1 | **C.Thiết kế và vẽ sơ đồ** |  | 5d | 2023-09-21 10:00 A | 2023-09-28 10:00 A |  | 100% |  |  | 40h | 40h | 4,000,000 | 4,000,000 |
| 38 | 1.5.1.1 | Thiết kế kiến trúc hệ thống |  | 1d | 2023-09-21 10:00 A | 2023-09-22 10:00 A |  | 100% |  | Huỳnh Anh Vũ | 8h | 8h | 800,000 | 800,000 |
| 39 | 1.5.1.2 | **Thiết kế chi tiết hệ thống** |  | 3d | 2023-09-22 10:00 A | 2023-09-27 10:00 A | 38 | 100% |  |  | 24h | 24h | 2,400,000 | 2,400,000 |
| 40 | 1.5.1.2.1 | Xây dựng mô hình lớp |  | 1d | 2023-09-22 10:00 A | 2023-09-25 10:00 A |  | 100% |  | Huỳnh Anh Vũ | 8h | 8h | 800,000 | 800,000 |
| 41 | 1.5.1.2.2 | Xây dựng lược đồ cơ sở dữ liệu |  | 1d | 2023-09-25 10:00 A | 2023-09-26 10:00 A | 40 | 100% |  | Huỳnh Anh Vũ | 8h | 8h | 800,000 | 800,000 |
| 42 | 1.5.1.2.3 | **Thiết kế giao diện** |  | 1d | 2023-09-26 10:00 A | 2023-09-27 10:00 A | 41 | 100% |  | Huỳnh Anh Vũ | 8h | 8h | 800,000 | 800,000 |
| 43 | 1.5.1.2.3.1 | Giao diện trang chủ |  | 0.2d | 2023-09-26 10:00 A | 2023-09-26 11:36 A |  | 100% |  |  |  |  |  |  |
| 44 | 1.5.1.2.3.2 | Giao diện đăng nhập/ đăng ký |  | 0.2d | 2023-09-26 10:00 A | 2023-09-26 11:36 A | 43 | 100% |  |  |  |  |  |  |
| 45 | 1.5.1.2.3.3 | Giao diện hiển thị chi tiết sản phẩm |  | 0.2d | 2023-09-26 10:00 A | 2023-09-26 11:36 A | 44 | 100% |  |  |  |  |  |  |
| 46 | 1.5.1.2.3.4 | Giao diện giỏ hàng |  | 0.2d | 2023-09-26 10:00 A | 2023-09-26 11:36 A | 45 | 100% |  |  |  |  |  |  |
| 47 | 1.5.1.2.3.5 | Giao diện thanh toán |  | 0.1d | 2023-09-26 10:00 A | 2023-09-26 10:48 A | 46 | 100% |  |  |  |  |  |  |
| 48 | 1.5.1.2.3.6 | Giao diện quản trị viên (Admin) |  | 0.1d | 2023-09-26 10:00 A | 2023-09-26 10:48 A | 47 | 100% |  |  |  |  |  |  |
| 49 | 1.5.1.3 | Vẽ sơ đồ ERD |  | 0.5d | 2023-09-27 10:00 A | 2023-09-27 15:00 A | 42 | 100% |  | Huỳnh Anh Vũ | 4h | 4h | 400,000 | 400,000 |
| 50 | 1.5.1.4 | Vẽ mô hình Use case |  | 0.5d | 2023-09-27 15:00 A | 2023-09-28 10:00 A | 49 | 100% |  | Huỳnh Anh Vũ | 4h | 4h | 400,000 | 400,000 |
| 51 | 1.6 | Hoàn thành thiết kế | milestone | 0d | 2023-09-28 10:00 A | 2023-09-28 10:00 A | 36 | 100% |  | Huỳnh Anh Vũ |  |  |  |  |
| 52 | 1.7 | **Thuê máy chủ lưu trữ wbesite** |  | 1d | 2023-09-28 10:00 A | 2023-09-29 10:00 A | 51 | 100% |  |  | 8h | 8h | 800,000 | 800,000 |
| 53 | 1.7.1 | **M.Thuê Hosting và tên miền** |  | 1d | 2023-09-28 10:00 A | 2023-09-29 10:00 A |  | 100% |  |  | 8h | 8h | 800,000 | 800,000 |
| 54 | 1.7.1.1 | **Thu thập thông tin bảng báo giá cho hosting và tên miền** |  | 1d | 2023-09-28 10:00 A | 2023-09-29 10:00 A |  | 100% |  |  | 8h | 8h | 800,000 | 800,000 |
| 55 | 1.7.1.1.1 | Tham khảo và đưa ra quyết định chọn nhà cung cấp |  | 0.25d | 2023-09-28 10:00 A | 2023-09-28 12:00 A |  | 100% |  | Huỳnh Anh Vũ | 2h | 2h | 200,000 | 200,000 |
| 56 | 1.7.1.1.2 | Ký hợp đồng |  | 0.5d | 2023-09-28 13:00 A | 2023-09-28 17:00 A | 55 | 100% |  | Huỳnh Anh Vũ | 4h | 4h | 400,000 | 400,000 |
| 57 | 1.7.1.1.3 | Ký duyệt thanh toán |  | 0.25d | 2023-09-29 08:00 A | 2023-09-29 10:00 A | 56 | 100% |  | Huỳnh Anh Vũ | 2h | 2h | 200,000 | 200,000 |
| 58 | 1.8 | **Xây dựng website** |  | 23.5d | 2023-09-29 10:00 A | 2023-11-01 15:00 A | 52 | 100% |  |  | 188h | 188h | 18,800,000 | 18,800,000 |
| 59 | 1.8.1 | **D. Code Front - End** |  | 15d | 2023-09-29 10:00 A | 2023-10-20 10:00 A |  | 100% |  |  | 120h | 120h | 12,000,000 | 12,000,000 |
| 60 | 1.8.1.1 | Code trang chủ |  | 1d | 2023-09-29 10:00 A | 2023-10-02 10:00 A |  | 100% |  | Huỳnh Anh Vũ | 8h | 8h | 800,000 | 800,000 |
| 61 | 1.8.1.2 | Trang đăng nhập / đăng ký |  | 1d | 2023-10-02 10:00 A | 2023-10-03 10:00 A | 60 | 100% | start no earlier than 2023-09-29 08:00 | Huỳnh Anh Vũ | 8h | 8h | 800,000 | 800,000 |
| 62 | 1.8.1.3 | Trang giỏ hàng |  | 2d | 2023-10-03 10:00 A | 2023-10-05 10:00 A | 61 | 100% |  | Huỳnh Anh Vũ | 16h | 16h | 1,600,000 | 1,600,000 |
| 63 | 1.8.1.4 | Trang hiển thị sản phẩm |  | 2d | 2023-10-05 10:00 A | 2023-10-09 10:00 A | 62 | 100% |  | Huỳnh Anh Vũ | 16h | 16h | 1,600,000 | 1,600,000 |
| 64 | 1.8.1.5 | Trang thanh toán |  | 2d | 2023-10-09 10:00 A | 2023-10-11 10:00 A | 63 | 100% |  | Huỳnh Anh Vũ | 16h | 16h | 1,600,000 | 1,600,000 |
| 65 | 1.8.1.6 | Trang chat bot hỗ trợ khách hàng |  | 3d | 2023-10-11 10:00 A | 2023-10-16 10:00 A | 64 | 100% |  | Huỳnh Anh Vũ | 24h | 24h | 2,400,000 | 2,400,000 |
| 66 | 1.8.1.7 | Trang thông tin khách hàng |  | 1d | 2023-10-16 10:00 A | 2023-10-17 10:00 A | 65 | 100% |  | Huỳnh Anh Vũ | 8h | 8h | 800,000 | 800,000 |
| 67 | 1.8.1.8 | Trang của quản trị viên (Admin) |  | 3d | 2023-10-17 10:00 A | 2023-10-20 10:00 A | 66 | 100% |  | Huỳnh Anh Vũ | 24h | 24h | 2,400,000 | 2,400,000 |

| ID | WBS | Task | Type | Duration | Start | Finish | Predecessors | Complete | Resources | Work | Actual work | Cost | Actual cost |
| --- | --- | --- | --- | --- | --- | --- | --- | --- | --- | --- | --- | --- | --- |
| 68 | 1.8.2 | **E. Code Back - End** |  | 8.5d | 2023-10-20 10:00 A | 2023-11-01 15:00 A | 59 | 100% |  | 68h | 68h | 6,800,000 | 6,800,000 |
| 69 | 1.8.2.1 | Code trang chủ |  | 2d | 2023-10-20 10:00 A | 2023-10-24 10:00 A |  | 100% | Huỳnh Anh Vũ | 16h | 16h | 1,600,000 | 1,600,000 |
| 70 | 1.8.2.2 | Code đăng nhập/ đăng ký |  | 1d | 2023-10-24 10:00 A | 2023-10-25 10:00 A | 69 | 100% | Huỳnh Anh Vũ | 8h | 8h | 800,000 | 800,000 |
| 71 | 1.8.2.3 | Code đặt hàng |  | 1d | 2023-10-25 10:00 A | 2023-10-26 10:00 A | 70 | 100% | Huỳnh Anh Vũ | 8h | 8h | 800,000 | 800,000 |
| 72 | 1.8.2.4 | Code thanh toán |  | 1d | 2023-10-26 10:00 A | 2023-10-27 10:00 A | 71 | 100% | Huỳnh Anh Vũ | 8h | 8h | 800,000 | 800,000 |
| 73 | 1.8.2.5 | Code hỗ trợ khách hàng |  | 0.5d | 2023-10-27 10:00 A | 2023-10-27 15:00 A | 72 | 100% | Huỳnh Anh Vũ | 4h | 4h | 400,000 | 400,000 |
| 74 | 1.8.2.6 | Code trang quản lý của quản trị viên (admin) |  | 3d | 2023-10-27 15:00 A | 2023-11-01 15:00 A | 73 | 100% | Huỳnh Anh Vũ | 24h | 24h | 2,400,000 | 2,400,000 |
| 75 | 1.9 | Hoàn thành xây dựng website | milestone | 0d | 2023-11-01 15:00 A | 2023-11-01 15:00 A | 58 | 100% | Huỳnh Anh Vũ |  |  |  |  |
| 76 | 1.10 | **Viết test case** |  | 9.25d | 2023-11-01 15:00 A | 2023-11-14 17:00 A | 75 | 100% |  | 74h | 74h | 7,400,000 | 7,400,000 |
| 77 | 1.10.1 | **F. Viết Test case** |  | 9.25d | 2023-11-01 15:00 A | 2023-11-14 17:00 A |  | 100% |  | 74h | 74h | 7,400,000 | 7,400,000 |
| 78 | 1.10.1.1 | **Viết test case bên phía người dùng ( user)** |  | 4.25d | 2023-11-01 15:00 A | 2023-11-07 17:00 A |  | 100% |  | 34h | 34h | 3,400,000 | 3,400,000 |
| 79 | 1.10.1.1.1 | Viết test case đăng ký/ đăng nhập |  | 0.25d | 2023-11-01 15:00 A | 2023-11-01 17:00 A |  | 100% | Võ Thanh Minh | 2h | 2h | 200,000 | 200,000 |
| 80 | 1.10.1.1.2 | Viết test case xác thực tài khoản |  | 0.25d | 2023-11-02 08:00 A | 2023-11-02 10:00 A | 79 | 100% | Võ Thanh Minh | 2h | 2h | 200,000 | 200,000 |
| 81 | 1.10.1.1.3 | **Viết test case moulde đặt hàng** |  | 2.25d | 2023-11-02 10:00 A | 2023-11-06 12:00 A | 80 | 100% |  | 18h | 18h | 1,800,000 | 1,800,000 |
| 82 | 1.10.1.1.3.1 | Viết test case tìm kiếm sản phẩm |  | 0.25d | 2023-11-02 10:00 A | 2023-11-02 12:00 A |  | 100% | Võ Thanh Minh | 2h | 2h | 200,000 | 200,000 |
| 83 | 1.10.1.1.3.2 | Viết test case xem chi tiết sản phẩm |  | 0.25d | 2023-11-02 13:00 A | 2023-11-02 15:00 A | 82 | 100% | Võ Thanh Minh | 2h | 2h | 200,000 | 200,000 |
| 84 | 1.10.1.1.3.3 | Viết test case thêm sản phẩm vào giỏ hàng |  | 0.25d | 2023-11-02 15:00 A | 2023-11-02 17:00 A | 83 | 100% | Võ Thanh Minh | 2h | 2h | 200,000 | 200,000 |
| 85 | 1.10.1.1.3.4 | Viết test case chỉnh sửa số lượng sản phẩm |  | 0.25d | 2023-11-03 08:00 A | 2023-11-03 10:00 A | 84 | 100% | Võ Thanh Minh | 2h | 2h | 200,000 | 200,000 |
| 86 | 1.10.1.1.3.5 | Viết test case xóa sản phẩm khỏi giỏ hàng |  | 0.25d | 2023-11-03 10:00 A | 2023-11-03 12:00 A | 85 | 100% | Võ Thanh Minh | 2h | 2h | 200,000 | 200,000 |
| 87 | 1.10.1.1.3.6 | Test chức năng áp dụng ưu đãi |  | 0.25d | 2023-11-03 13:00 A | 2023-11-03 15:00 A | 86 | 100% | Võ Thanh Minh | 2h | 2h | 200,000 | 200,000 |
| 88 | 1.10.1.1.3.7 | Viết test case thanh toán |  | 0.25d | 2023-11-03 15:00 A | 2023-11-03 17:00 A | 87 | 100% | Võ Thanh Minh | 2h | 2h | 200,000 | 200,000 |
| 89 | 1.10.1.1.3.8 | Viết test case đánh giá sản phẩm |  | 0.25d | 2023-11-06 08:00 A | 2023-11-06 10:00 A | 88 | 100% | Võ Thanh Minh | 2h | 2h | 200,000 | 200,000 |
| 90 | 1.10.1.1.3.9 | Viết test case xác nhận đơn hàng |  | 0.25d | 2023-11-06 10:00 A | 2023-11-06 12:00 A | 89 | 100% | Võ Thanh Minh | 2h | 2h | 200,000 | 200,000 |
| 91 | 1.10.1.1.4 | Viết Test case xem đơn đặt hàng |  | 1d | 2023-11-06 13:00 A | 2023-11-07 12:00 A | 81 | 100% | Võ Thanh Minh | 8h | 8h | 800,000 | 800,000 |
| 92 | 1.10.1.1.5 | Viết test case xem sản phẩm đã mua |  | 0.5d | 2023-11-07 13:00 A | 2023-11-07 17:00 A | 91 | 100% | Võ Thanh Minh | 4h | 4h | 400,000 | 400,000 |

| ID | WBS | Task | Type | Duration | Start | Finish | Predecessors | Complete | Resources | Work | Actual work | Cost | Actual cost |
| --- | --- | --- | --- | --- | --- | --- | --- | --- | --- | --- | --- | --- | --- |
| 93 | 1.10.1.2 | **Viết test case bên phía quản trị viên(admin)** |  | 5d | 2023-11-08 08:00 A | 2023-11-14 17:00 A | 78 | 100% |  | 40h | 40h | 4,000,000 | 4,000,000 |
| 94 | 1.10.1.2.1 | **Test case quản lý người dùng** |  | 1d | 2023-11-08 08:00 A | 2023-11-08 17:00 A |  | 100% |  | 8h | 8h | 800,000 | 800,000 |
| 95 | 1.10.1.2.1.1 | Viết test case xem thông tin người dùng |  | 0.25d | 2023-11-08 08:00 A | 2023-11-08 10:00 A |  | 100% | Võ Thanh Minh | 2h | 2h | 200,000 | 200,000 |
| 96 | 1.10.1.2.1.2 | Viết test case xóa thông tin người dùng |  | 0.25d | 2023-11-08 10:00 A | 2023-11-08 12:00 A | 95 | 100% | Võ Thanh Minh | 2h | 2h | 200,000 | 200,000 |
| 97 | 1.10.1.2.1.3 | Viết test case sửa thông tin người dùng |  | 0.25d | 2023-11-08 13:00 A | 2023-11-08 15:00 A | 96 | 100% | Võ Thanh Minh | 2h | 2h | 200,000 | 200,000 |
| 98 | 1.10.1.2.1.4 | Viết test case xem sản phẩm người dùng đã mua |  | 0.25d | 2023-11-08 15:00 A | 2023-11-08 17:00 A | 97 | 100% | Võ Thanh Minh | 2h | 2h | 200,000 | 200,000 |
| 99 | 1.10.1.2.2 | **Test case quản lý sản phẩm** |  | 1d | 2023-11-09 08:00 A | 2023-11-09 17:00 A | 94 | 100% |  | 8h | 8h | 800,000 | 800,000 |
| 100 | 1.10.1.2.2.1 | Viết test case thêm sản phẩm |  | 0.5d | 2023-11-09 08:00 A | 2023-11-09 12:00 A |  | 100% | Võ Thanh Minh | 4h | 4h | 400,000 | 400,000 |
| 101 | 1.10.1.2.2.2 | Viết test case xóa sản phẩm |  | 0.25d | 2023-11-09 13:00 A | 2023-11-09 15:00 A | 100 | 100% | Võ Thanh Minh | 2h | 2h | 200,000 | 200,000 |
| 102 | 1.10.1.2.2.3 | Viết test case sửa sản phẩm |  | 0.25d | 2023-11-09 15:00 A | 2023-11-09 17:00 A | 101 | 100% | Võ Thanh Minh | 2h | 2h | 200,000 | 200,000 |
| 103 | 1.10.1.2.3 | **Viết test case quản lý đơn đặt hàng** |  | 1d | 2023-11-10 08:00 A | 2023-11-10 17:00 A | 99 | 100% |  | 8h | 8h | 800,000 | 800,000 |
| 104 | 1.10.1.2.3.1 | Viết test case xem đơn hàng |  | 0.5d | 2023-11-10 08:00 A | 2023-11-10 12:00 A |  | 100% | Võ Thanh Minh | 4h | 4h | 400,000 | 400,000 |
| 105 | 1.10.1.2.3.2 | Viết test case xóa đơn hàng |  | 0.25d | 2023-11-10 13:00 A | 2023-11-10 15:00 A | 104 | 100% | Võ Thanh Minh | 2h | 2h | 200,000 | 200,000 |
| 106 | 1.10.1.2.3.3 | Viết test case thay đổi trạng thái đơn hàng |  | 0.25d | 2023-11-10 15:00 A | 2023-11-10 17:00 A | 105 | 100% | Võ Thanh Minh | 2h | 2h | 200,000 | 200,000 |
| 107 | 1.10.1.2.4 | **Test case moudle báo cáo thống kê** |  | 1d | 2023-11-13 08:00 A | 2023-11-13 17:00 A | 103 | 100% |  | 8h | 8h | 800,000 | 800,000 |
| 108 | 1.10.1.2.4.1 | Viết test case thống kê người dùng truy cập |  | 0.5d | 2023-11-13 08:00 A | 2023-11-13 12:00 A |  | 100% | Võ Thanh Minh | 4h | 4h | 400,000 | 400,000 |
| 109 | 1.10.1.2.4.2 | Viết test case thống kê chi phí |  | 0.25d | 2023-11-13 13:00 A | 2023-11-13 15:00 A | 108 | 100% | Võ Thanh Minh | 2h | 2h | 200,000 | 200,000 |
| 110 | 1.10.1.2.4.3 | Viết test case thống kê lợi nhuận |  | 0.25d | 2023-11-13 15:00 A | 2023-11-13 17:00 A | 109 | 100% | Võ Thanh Minh | 2h | 2h | 200,000 | 200,000 |
| 111 | 1.10.1.2.5 | **Test case quản lý phản hồi khách hàng** |  | 1d | 2023-11-14 08:00 A | 2023-11-14 17:00 A | 107 | 100% |  | 8h | 8h | 800,000 | 800,000 |
| 112 | 1.10.1.2.5.1 | Viết test case phân loại phản hồi |  | 0.25d | 2023-11-14 08:00 A | 2023-11-14 10:00 A |  | 100% | Trần Thanh Hoài | 2h | 2h | 200,000 | 200,000 |
| 113 | 1.10.1.2.5.2 | Viết test case thay đổi trạng thái phản hồi |  | 0.5d | 2023-11-14 10:00 A | 2023-11-14 15:00 A | 112 | 100% | Trần Thanh Hoài | 4h | 4h | 400,000 | 400,000 |
| 114 | 1.10.1.2.5.3 | Viết test case trả lời phản hồi |  | 0.25d | 2023-11-14 15:00 A | 2023-11-14 17:00 A | 113 | 100% | Trần Thanh Hoài | 2h | 2h | 200,000 | 200,000 |
| 115 | 1.11 | Hoàn thành viết test case | milestone | 0d | 2023-11-14 17:00 A | 2023-11-14 17:00 A | 76 | 100% | Trần Thanh Hoài |  |  |  |  |
| 116 | 1.12 | **Setup môi trường test và môi trường thật** |  | 1d | 2023-09-29 10:00 A | 2023-10-02 10:00 A | 52 | 100% |  | 8h | 8h | 800,000 | 800,000 |
| 117 | 1.12.1 | **N.Cài đặt môi trường** |  | 1d | 2023-09-29 10:00 A | 2023-10-02 10:00 A |  | 100% |  | 8h | 8h | 800,000 | 800,000 |
| 118 | 1.12.1.1 | **Cài đặt visual code** |  | 0.5d | 2023-09-29 10:00 A | 2023-09-29 15:00 A |  | 100% |  | 4h | 4h | 400,000 | 400,000 |
| 119 | 1.12.1.1.1 | Cài đặt Visual code 2015 |  | 0.5d | 2023-09-29 10:00 A | 2023-09-29 15:00 A |  | 100% | Trần Thanh Hoài | 4h | 4h | 400,000 | 400,000 |

| ID | WBS | Task | Duration | Start | Finish | Predecessors | Complete | Remaining | Total slack | Resources | Work | Actual work | Cost | Actual cost |
| --- | --- | --- | --- | --- | --- | --- | --- | --- | --- | --- | --- | --- | --- | --- |
| 120 | 1.12.1.2 | **Cài đặt MySql** | 0.5d | 2023-09-29 15:00 A | 2023-10-02 10:00 A | 119 | 100% |  |  |  | 4h | 4h | 400,000 | 400,000 |
| 121 | 1.12.1.2.1 | Cài đặt MySql 2015 | 0.5d | 2023-09-29 15:00 A | 2023-10-02 10:00 A |  | 100% |  |  | Trần Thanh Hoài | 4h | 4h | 400,000 | 400,000 |
| 122 | 1.13 | **Kiểm thử ( testing )** | 10.5d | 2023-11-15 08:00 A | 2023-11-29 12:00 | 115 | 11% | 9.35d | 0d |  | 84h | 9.2h | 8,400,000 | 920,000 |
| 123 | 1.13.1 | **G.Nhập dữ liệu và cấu hình trên môi trường test** | 1.75d | 2023-11-15 08:00 A | 2023-11-16 15:00 |  | 66% | 0.6d | 0d |  | 14h | 9.2h | 1,400,000 | 920,000 |
| 124 | 1.13.1.1 | Phân quyền quản trị viên (Admin) | 0.5d | 2023-11-15 08:00 A | 2023-11-15 12:00 A |  | 100% |  |  | Trần Thanh Hoài | 4h | 4h | 400,000 | 400,000 |
| 125 | 1.13.1.2 | Nhập thông tin danh mục | 0.25d | 2023-11-15 13:00 A | 2023-11-15 15:00 A | 124 | 100% |  |  | Trần Thanh Hoài | 2h | 2h | 200,000 | 200,000 |
| 126 | 1.13.1.3 | Nhập thông tin nhà cung cấp | 0.25d | 2023-11-15 15:00 A | 2023-11-15 17:00 A | 125 | 100% |  |  | Trần Thanh Hoài | 2h | 2h | 200,000 | 200,000 |
| 127 | 1.13.1.4 | Nhập thông tin sản phẩm | 0.25d | 2023-11-16 08:00 A | 2023-11-16 10:00 | 126 | 60% | 0.1d | 0d | Trần Thanh Hoài | 2h | 1.2h | 200,000 | 120,000 |
| 128 | 1.13.1.5 | Nhập giá sản phẩm | 0.25d | 2023-11-16 10:00 | 2023-11-16 12:00 | 127 |  |  | 0d | Trần Thanh Hoài | 2h |  | 200,000 |  |
| 129 | 1.13.1.6 | Nhập thông tin ưu đãi | 0.25d | 2023-11-16 13:00 | 2023-11-16 15:00 | 128 |  |  | 0d | Trần Thanh Hoài | 2h |  | 200,000 |  |
| 130 | 1.13.2 | **H.Thực hiện test** | 8.75d | 2023-11-16 15:00 | 2023-11-29 12:00 | 123 |  |  | 0d |  | 70h |  | 7,000,000 |  |
| 131 | 1.13.2.1 | **Test chức năng bên phía người dùng ( user )** | 3.25d | 2023-11-16 15:00 | 2023-11-21 17:00 |  |  |  | 0d |  | 26h |  | 2,600,000 |  |
| 132 | 1.13.2.1.1 | Test chức năng đăng nhập/ đăng ký | 0.25d | 2023-11-16 15:00 | 2023-11-16 17:00 |  |  |  | 0d | Trần Gia Huy | 2h |  | 200,000 |  |
| 133 | 1.13.2.1.2 | Test chức năng xác thực tài khoản | 0.25d | 2023-11-17 08:00 | 2023-11-17 10:00 | 132 |  |  | 0d | Trần Gia Huy | 2h |  | 200,000 |  |
| 134 | 1.13.2.1.3 | **Test chức năng quản lý tài khoản** | 0.5d | 2023-11-17 10:00 | 2023-11-17 15:00 | 133 |  |  | 0d |  | 4h |  | 400,000 |  |
| 135 | 1.13.2.1.3.1 | Test chức năng xem đơn đặt hàng | 0.25d | 2023-11-17 10:00 | 2023-11-17 12:00 |  |  |  | 0d | Trần Gia Huy | 2h |  | 200,000 |  |
| 136 | 1.13.2.1.3.2 | Test chức năng xem sản phẩm đã mua | 0.25d | 2023-11-17 13:00 | 2023-11-17 15:00 | 135 |  |  | 0d | Trần Gia Huy | 2h |  | 200,000 |  |
| 137 | 1.13.2.1.4 | **Test module đặt hàng** | 2.25d | 2023-11-17 15:00 | 2023-11-21 17:00 | 134 |  |  | 0d |  | 18h |  | 1,800,000 |  |
| 138 | 1.13.2.1.4.1 | Test chức năng tìm kiếm sản phẩm | 0.25d | 2023-11-17 15:00 | 2023-11-17 17:00 |  |  |  | 0d | Trần Gia Huy | 2h |  | 200,000 |  |
| 139 | 1.13.2.1.4.2 | Test chức năng xem chi tiết sản phẩm | 0.25d | 2023-11-20 08:00 | 2023-11-20 10:00 | 138 |  |  | 0d | Trần Gia Huy | 2h |  | 200,000 |  |
| 140 | 1.13.2.1.4.3 | Test chức năng thêm sản phẩm vào giỏ hàng | 0.25d | 2023-11-20 10:00 | 2023-11-20 12:00 | 139 |  |  | 0d | Trần Gia Huy | 2h |  | 200,000 |  |
| 141 | 1.13.2.1.4.4 | Test chức năng chỉnh sửa số lượng sản phẩm | 0.25d | 2023-11-20 13:00 | 2023-11-20 15:00 | 140 |  |  | 0d | Trần Gia Huy | 2h |  | 200,000 |  |
| 142 | 1.13.2.1.4.5 | Test chức năng xóa sản phẩm khỏi giỏ hàng | 0.25d | 2023-11-20 15:00 | 2023-11-20 17:00 | 141 |  |  | 0d | Trần Gia Huy | 2h |  | 200,000 |  |
| 143 | 1.13.2.1.4.6 | Test chức năng xác nhận đơn hàng | 0.25d | 2023-11-21 08:00 | 2023-11-21 10:00 | 142 |  |  | 0d | Trần Gia Huy | 2h |  | 200,000 |  |
| 144 | 1.13.2.1.4.7 | Test chức năng áp dụng ưu đãi | 0.25d | 2023-11-21 10:00 | 2023-11-21 12:00 | 143 |  |  | 0d | Trần Gia Huy | 2h |  | 200,000 |  |
| 145 | 1.13.2.1.4.8 | Test chức năng thanh toán | 0.25d | 2023-11-21 13:00 | 2023-11-21 15:00 | 144 |  |  | 0d | Trần Gia Huy | 2h |  | 200,000 |  |
| 146 | 1.13.2.1.4.9 | Test chức năng đánh giá sản phẩm | 0.25d | 2023-11-21 15:00 | 2023-11-21 17:00 | 145 |  |  | 0d | Trần Gia Huy | 2h |  | 200,000 |  |

| ID | WBS | Task | Type | Duration | Start | Finish | Predecessors | Total slack | Resources | Work | Cost |
| --- | --- | --- | --- | --- | --- | --- | --- | --- | --- | --- | --- |
| 147 | 1.13.2.2 | **Test chức năng bên phía quản trị viên ( admin )** |  | 4d | 2023-11-22 08:00 | 2023-11-27 17:00 | 131 | 0d |  | 32h | 3,200,000 |
| 148 | 1.13.2.2.1 | **Test modle quản lý người dùng** |  | 1d | 2023-11-22 08:00 | 2023-11-22 17:00 |  | 0d |  | 8h | 800,000 |
| 149 | 1.13.2.2.1.1 | Test chức năng xem thông tin người dùng |  | 0.25d | 2023-11-22 08:00 | 2023-11-22 10:00 |  | 0d | Trần Gia Huy | 2h | 200,000 |
| 150 | 1.13.2.2.1.2 | Viết test case xóa thông tin người dùng |  | 0.25d | 2023-11-22 10:00 | 2023-11-22 12:00 | 149 | 0d | Trần Gia Huy | 2h | 200,000 |
| 151 | 1.13.2.2.1.3 | Viết test case sửa thông tin người dùng |  | 0.25d | 2023-11-22 13:00 | 2023-11-22 15:00 | 150 | 0d | Trần Gia Huy | 2h | 200,000 |
| 152 | 1.13.2.2.1.4 | Viết test case xem sản phẩm người dùng đã mua |  | 0.25d | 2023-11-22 15:00 | 2023-11-22 17:00 | 151 | 0d | Trần Gia Huy | 2h | 200,000 |
| 153 | 1.13.2.2.2 | **Test module quản lý sản phẩm** |  | 0.75d | 2023-11-23 08:00 | 2023-11-23 15:00 | 148 | 0d |  | 6h | 600,000 |
| 154 | 1.13.2.2.2.1 | Test chức năng thêm sản phẩm |  | 0.25d | 2023-11-23 08:00 | 2023-11-23 10:00 |  | 0d | Trần Gia Huy | 2h | 200,000 |
| 155 | 1.13.2.2.2.2 | Test chức năng xóa sản phẩm |  | 0.25d | 2023-11-23 10:00 | 2023-11-23 12:00 | 154 | 0d | Trần Gia Huy | 2h | 200,000 |
| 156 | 1.13.2.2.2.3 | Test chức năng sửa sản phẩm |  | 0.25d | 2023-11-23 13:00 | 2023-11-23 15:00 | 155 | 0d | Trần Gia Huy | 2h | 200,000 |
| 157 | 1.13.2.2.3 | **Viết test case quản lý đơn đặt hàng** |  | 0.75d | 2023-11-23 15:00 | 2023-11-24 12:00 | 153 | 0d |  | 6h | 600,000 |
| 158 | 1.13.2.2.3.1 | Test chức năng xem đơn hàng |  | 0.25d | 2023-11-23 15:00 | 2023-11-23 17:00 |  | 0d | Trần Gia Huy | 2h | 200,000 |
| 159 | 1.13.2.2.3.2 | Test chức năng xóa đơn hàng |  | 0.25d | 2023-11-24 08:00 | 2023-11-24 10:00 | 158 | 0d | Trần Gia Huy | 2h | 200,000 |
| 160 | 1.13.2.2.3.3 | Test chức năng thay đổi trạng thái đơn hàng |  | 0.25d | 2023-11-24 10:00 | 2023-11-24 12:00 | 159 | 0d | Trần Gia Huy | 2h | 200,000 |
| 161 | 1.13.2.2.4 | **Test modle quản lý thống kê** |  | 0.75d | 2023-11-24 13:00 | 2023-11-27 10:00 | 157 | 0d |  | 6h | 600,000 |
| 162 | 1.13.2.2.4.1 | Test chức năng thống kê người dùng truy cập |  | 0.25d | 2023-11-24 13:00 | 2023-11-24 15:00 |  | 0d | Trần Gia Huy | 2h | 200,000 |
| 163 | 1.13.2.2.4.2 | Test chức năng thống kê chi phí |  | 0.25d | 2023-11-24 15:00 | 2023-11-24 17:00 | 162 | 0d | Trần Gia Huy | 2h | 200,000 |
| 164 | 1.13.2.2.4.3 | Test chức năng thống kê lợi nhuận |  | 0.25d | 2023-11-27 08:00 | 2023-11-27 10:00 | 163 | 0d | Trần Gia Huy | 2h | 200,000 |
| 165 | 1.13.2.2.5 | **Test modle quản lý phản hồi khách hàng** |  | 0.75d | 2023-11-27 10:00 | 2023-11-27 17:00 | 161 | 0d |  | 6h | 600,000 |
| 166 | 1.13.2.2.5.1 | Test chức năng phân loại phản hồi khách hàng |  | 0.25d | 2023-11-27 10:00 | 2023-11-27 12:00 |  | 0d | Trần Gia Huy | 2h | 200,000 |
| 167 | 1.13.2.2.5.2 | Test chức năng thay đổi trạng thái phản hồi |  | 0.25d | 2023-11-27 13:00 | 2023-11-27 15:00 | 166 | 0d | Trần Gia Huy | 2h | 200,000 |
| 168 | 1.13.2.2.5.3 | Test case trả lời phản hồi khách hàng |  | 0.25d | 2023-11-27 15:00 | 2023-11-27 17:00 | 167 | 0d | Trần Gia Huy | 2h | 200,000 |
| 169 | 1.13.2.3 | Kiểm tra và sửa lỗi |  | 0.5d | 2023-11-28 08:00 | 2023-11-28 12:00 | 147 | 0d | Trần Gia Huy | 4h | 400,000 |
| 170 | 1.13.2.4 | Viết báo cáo kiểm thử |  | 1d | 2023-11-28 13:00 | 2023-11-29 12:00 | 169 | 0d | Trần Gia Huy | 8h | 800,000 |
| 171 | 1.14 | Hoàn thành kiểm thử | milestone | 0d | 2023-11-29 12:00 | 2023-11-29 12:00 | 122 | 5.5d | Trần Gia Huy |  |  |

| ID | WBS | Task | Type | Duration | Start | Finish | Predecessors | Total slack | Resources | Work | Cost |
| --- | --- | --- | --- | --- | --- | --- | --- | --- | --- | --- | --- |
| 172 | 1.15 | **Traning người dùng** |  | 4d | 2023-11-29 13:00 | 2023-12-05 12:00 | 122 | 0d |  | 32h | 3,200,000 |
| 173 | 1.15.1 | **I.Traning chức năng quản lý tài khoản** |  | 1d | 2023-11-29 13:00 | 2023-11-30 12:00 |  | 0d |  | 8h | 800,000 |
| 174 | 1.15.1.1 | Xem, sửa, xóa thông tin tài khoản |  | 1d | 2023-11-29 13:00 | 2023-11-30 12:00 |  | 0d | Huỳnh Anh Vũ | 8h | 800,000 |
| 175 | 1.15.2 | **J.Traning chức năng đặt, mua hàng** |  | 1d | 2023-11-30 13:00 | 2023-12-01 12:00 | 173 | 0d |  | 8h | 800,000 |
| 176 | 1.15.2.1 | Các chức năng xem sản phẩm. Thêm sản phẩm vào giỏ hàng, xác nhận đơn hàng, thanh toán |  | 1d | 2023-11-30 13:00 | 2023-12-01 12:00 |  | 0d | Huỳnh Anh Vũ | 8h | 800,000 |
| 177 | 1.15.3 | **K.Traning chức năng quản lý sản phẩm** |  | 1d | 2023-12-01 13:00 | 2023-12-04 12:00 | 175 | 0d |  | 8h | 800,000 |
| 178 | 1.15.3.1 | Các chức năng thêm, xóa, sửa sản phẩm |  | 1d | 2023-12-01 13:00 | 2023-12-04 12:00 |  | 0d | Huỳnh Anh Vũ | 8h | 800,000 |
| 179 | 1.15.4 | **L.Traning chức năng báo cáo thống kê** |  | 1d | 2023-12-04 13:00 | 2023-12-05 12:00 | 177 | 0d |  | 8h | 800,000 |
| 180 | 1.15.4.1 | Các chức năng thống kê số người dùng truy câp, chi phí, lợi nhuận , in ấn báo cáo |  | 1d | 2023-12-04 13:00 | 2023-12-05 12:00 |  | 0d | Huỳnh Anh Vũ | 8h | 800,000 |
| 181 | 1.16 | Hoàn thành traning người dùng | milestone | 0d | 2023-12-05 12:00 | 2023-12-05 12:00 | 172 | 0d |  |  |  |
| 182 | 1.17 | **Triển khai trên môi trường thật** |  | 1.5d | 2023-12-05 13:00 | 2023-12-06 17:00 | 181 | 0d |  | 12h | 1,200,000 |
| 183 | 1.17.1 | **O.Nhập dữ liệu và cấu hình trên môi trường thật** |  | 1.5d | 2023-12-05 13:00 | 2023-12-06 17:00 |  | 0d |  | 12h | 1,200,000 |
| 184 | 1.17.1.1 | Phân quyền quản trị viên (Admin) |  | 0.25d | 2023-12-05 13:00 | 2023-12-05 15:00 |  | 0d | Trần Thanh Hoài | 2h | 200,000 |
| 185 | 1.17.1.2 | Nhập thông tin sản phẩm |  | 0.25d | 2023-12-05 15:00 | 2023-12-05 17:00 | 184 | 0d | Trần Thanh Hoài | 2h | 200,000 |
| 186 | 1.17.1.3 | Nhập thông tin danh mục |  | 0.25d | 2023-12-06 08:00 | 2023-12-06 10:00 | 185 | 0d | Trần Thanh Hoài | 2h | 200,000 |
| 187 | 1.17.1.4 | Nhập thông tin nhà cung cấp |  | 0.25d | 2023-12-06 10:00 | 2023-12-06 12:00 | 186 | 0d | Trần Thanh Hoài | 2h | 200,000 |
| 188 | 1.17.1.5 | Nhập giá sản phẩm |  | 0.25d | 2023-12-06 13:00 | 2023-12-06 15:00 | 187 | 0d | Trần Thanh Hoài | 2h | 200,000 |
| 189 | 1.17.1.6 | Nhập thông tin ưu đãi |  | 0.25d | 2023-12-06 15:00 | 2023-12-06 17:00 | 188 | 0d | Trần Thanh Hoài | 2h | 200,000 |
| 190 | 1.18 | Hoàn thành giai đoạn triển khai môi trường thật | milestone | 0d | 2023-12-06 17:00 | 2023-12-06 17:00 | 182 | 0d |  |  |  |
| 191 | 1.19 | Golive ( Hoàn thành dự án) | milestone | 0d | 2023-12-06 17:00 | 2023-12-06 17:00 | 190 | 0d |  |  |  |
